# proyectoSEOV

Schedule from MS Project, 2012-08-13 to 2013-06-22, A marks actual dates.
UPC

## Calendars

- Estándar: Mon-Sun 09:00-13:00, 15:00-19:00. Exceptions (off unless hours are given): 2012-10-01 to 2012-10-07 (Parciales 2012), 2012-11-19 to 2012-11-25 (Fin tareas QA), 2012-11-26 to 2012-12-01 (Finales 2012), 2012-12-02 to 2012-12-04 (Vacaciones), 2012-12-05 09:00-13:00, 15:00-19:00, 2012-12-06 to 2013-03-17 (Vacaciones), 2013-05-06 to 2013-05-12 (Parciales 2013).

## Resources

| Resource |
| --- |
| Lider Proyecto |
| Arquitecto SW |
| Cliente |
| Asesor |
| Analista QA |
| Recurso Desarrollador |
| v |

## Schedule

| ID | WBS | Task | Type | Duration | Start | Finish | Predecessors | Complete | Remaining | Total slack | Free slack | Constraint | Resources | Work | Actual work |
| --- | --- | --- | --- | --- | --- | --- | --- | --- | --- | --- | --- | --- | --- | --- | --- |
| 1 | 1 | **Planificación** |  | 26d | 2012-08-13 A | 2012-09-07 A |  | 100% |  |  |  |  |  | 570h | 570h |
| 2 | 1.1 | Elaboracion de charter |  | 17d | 2012-08-13 A | 2012-08-29 A |  | 100% |  |  |  | start no earlier than 2012-08-13 | Lider Proyecto; Arquitecto SW | 272h | 272h |
| 3 | 1.2 | Definicion de User Stories |  | 2d | 2012-08-15 A | 2012-08-16 A |  | 100% |  |  |  | finish no earlier than 2012-08-16 | Lider Proyecto; Arquitecto SW | 32h | 32h |
| 4 | 1.3 | Estimacion de puntos de esfuerzo |  | 1d | 2012-08-17 A | 2012-08-17 A | 3 | 100% |  |  |  | finish no earlier than 2012-08-17 | Lider Proyecto; Arquitecto SW | 16h | 16h |
| 5 | 1.4 | Priorizacion de User Stories |  | 1d | 2012-08-18 A | 2012-08-18 A | 4 | 100% |  |  |  |  | Lider Proyecto; Arquitecto SW | 16h | 16h |
| 6 | 1.5 | Definicion de Product Backlog |  | 1h | 2012-08-19 A | 2012-08-19 A | 5 | 100% |  |  |  | start no earlier than 2012-08-18 | Lider Proyecto; Arquitecto SW | 2h | 2h |
| 7 | 1.6 | Validacion Documentos Scrum |  | 8d | 2012-08-22 A | 2012-08-29 A |  | 100% |  |  |  | finish no earlier than 2012-08-29 | Analista QA | 64h | 64h |
| 8 | 1.7 | Elaboracion de cronograma |  | 8d | 2012-08-22 A | 2012-08-29 A |  | 100% |  |  |  | start no earlier than 2012-08-22 | Lider Proyecto; Arquitecto SW | 128h | 128h |
| 9 | 1.8 | Validacion Documentos PMO (Cronograma, Charter) |  | 5d | 2012-09-03 A | 2012-09-07 A |  | 100% |  |  |  | start no earlier than 2012-09-03 | Analista QA | 40h | 40h |
| 10 | 1.9 | Contrato QA | milestone | 0d | 2012-08-23 A | 2012-08-23 A |  | 100% |  |  |  | start no earlier than 2012-08-23 | Lider Proyecto |  |  |
| 11 | 2 | **Sprint 0** |  | 16d | 2012-08-30 A | 2012-09-14 A |  | 100% |  |  |  |  |  |  |  |
| 12 | 2.1 | Contrato SWF | milestone | 0d | 2012-08-30 A | 2012-08-30 A |  | 100% |  |  |  | start no earlier than 2012-08-30 | Arquitecto SW |  |  |
| 13 | 2.2 | Investigacion de Orientacion Vocacional |  | 14d | 2012-08-30 A | 2012-09-12 A |  | 100% |  |  |  | start no earlier than 2012-08-30 |  |  |  |
| 14 | 2.3 | Validación y levantamiento de observaciones de User Stories Sprint 0 |  | 1d | 2012-09-05 A | 2012-09-05 A |  | 100% |  |  |  | start no earlier than 2012-09-05 |  |  |  |
| 15 | 2.4 | Validación y levantamiento de observaciones de Investigación Orientación Vocacional |  | 2d | 2012-09-13 A | 2012-09-14 A | 13 | 100% |  |  |  |  |  |  |  |
| 16 | 2.5 | Acta Conformidad Cliente | milestone | 0d | 2012-09-14 A | 2012-09-14 A | 15 | 100% |  |  |  |  |  |  |  |
| 17 | 2.6 | Acta de Conformidad del Asesor Técnico | milestone | 0d | 2012-09-14 A | 2012-09-14 A | 15 | 100% |  |  |  |  |  |  |  |
| 18 | 2.7 | Finalización y retrospectiva del Sprint 0 | milestone | 0d | 2012-09-14 A | 2012-09-14 A | 15 | 100% |  |  |  |  |  |  |  |
| 19 | 3 | **Sprint 1** |  | 21d | 2012-09-14 A | 2012-10-12 |  | 84% | 3.27d | 128d |  |  |  | 648h | 560h |
| 20 | 3.1 | Contrato SWF | milestone | 0d | 2012-09-14 A | 2012-09-14 A | 18 | 100% |  |  |  |  |  |  |  |
| 21 | 3.2 | Elaborar documentacion de modelo contextual |  | 4d | 2012-09-15 A | 2012-09-18 A | 20 | 100% |  |  |  |  | Lider Proyecto | 32h | 32h |
| 22 | 3.3 | Elaborar documentacion de modelo conceptual |  | 4d | 2012-09-19 | 2012-09-22 | 21 |  |  | 138d | 0d |  | Lider Proyecto; Arquitecto SW | 64h |  |
| 23 | 3.4 | Elaborar documentación modelo de artefacto |  | 3d | 2012-09-23 | 2012-09-25 | 22 |  |  | 138d |  |  | Arquitecto SW | 24h |  |
| 24 | 3.5 | Establecer las reglas para el perfil de habilidades de los postulantes a la carrera de Ingeniería de Software |  | 11d | 2012-09-15 A | 2012-09-25 A | 21SS | 100% |  |  |  |  | Lider Proyecto; Arquitecto SW | 176h | 176h |
| 25 | 3.6 | Validación y levantamiento de observaciones de User Stories Sprint 1 |  | 5d | 2012-09-15 A | 2012-09-19 A | 21SS | 100% |  |  |  | start no earlier than 2012-09-13 | Analista QA; Lider Proyecto | 80h | 80h |
| 26 | 3.7 | Validacion y levantamiento de observaciones de Documentacion Modelos Common KADS 1 |  | 8d | 2012-09-26 A | 2012-10-10 A | 23 | 100% |  |  |  |  | Analista QA; Lider Proyecto | 112h | 112h |
| 27 | 3.8 | Validacion y levantamiento de observaciones de DOC de reglas HAB. Ing. SW |  | 10d | 2012-09-26 A | 2012-10-12 A | 24 | 100% |  |  |  |  | Analista QA; Lider Proyecto | 160h | 160h |
| 28 | 3.9 | Acta de Conformidad Cliente | milestone | 0d | 2012-10-12 A | 2012-10-12 A | 27 | 100% |  |  |  | start no earlier than 2012-10-08 | Lider Proyecto |  |  |
| 29 | 3.10 | Acta de Conformidad Asesor Técnico | milestone | 0d | 2012-10-12 A | 2012-10-12 A | 27 | 100% |  |  |  | start no earlier than 2012-10-08 | Lider Proyecto |  |  |
| 30 | 3.11 | Acta de Conformidad Experto Psicólogo | milestone | 0d | 2012-10-12 | 2012-10-12 | 27 |  |  | 128d |  | start no earlier than 2012-10-08 | Lider Proyecto |  |  |
| 31 | 3.12 | Finalización y retrospectiva del Sprint 1 | milestone | 0d | 2012-10-12 A | 2012-10-12 A | 27 | 100% |  |  |  | start no earlier than 2012-10-08 | Lider Proyecto |  |  |

| ID | WBS | Task | Type | Duration | Start | Finish | Predecessors | Complete | Remaining | Total slack | Free slack | Constraint | Resources | Work | Actual work |
| --- | --- | --- | --- | --- | --- | --- | --- | --- | --- | --- | --- | --- | --- | --- | --- |
| 32 | 4 | **Sprint 2** |  | 21d | 2012-10-12 A | 2012-11-02 |  | 69% | 6.61d | 107d |  |  |  | 688h | 489.6h |
| 33 | 4.1 | Contrato SWF | milestone | 0d | 2012-10-12 A | 2012-10-12 A | 31 | 100% |  |  |  |  |  |  |  |
| 34 | 4.2 | Establecer las reglas para el perfil de preferencias de los postulantes a la carrera de Ingeniería de Software |  | 8d | 2012-10-13 A | 2012-10-20 A | 33 | 100% |  |  |  |  | Arquitecto SW; Lider Proyecto | 128h | 128h |
| 35 | 4.3 | Implementar las reglas para los postulantes a la carrera de Ingeniería de Software |  | 8d | 2012-10-21 A | 2012-10-28 | 34 | 40% | 4.8d | 107d | 0d |  | Recurso Desarrollador | 64h | 25.6h |
| 36 | 4.4 | Establecer las reglas para el perfil de habilidades de los postulantes a la carrera de Ingeniería de Sistemas |  | 8d | 2012-10-21 A | 2012-10-28 A | 35SS | 100% |  |  |  | start no earlier than 2012-10-08 | Arquitecto SW; Lider Proyecto | 128h | 128h |
| 37 | 4.5 | Establecer las reglas para el perfil de preferencias de los postulantes a la carrera de Ingeniería de Sistemas |  | 8d | 2012-10-21 A | 2012-10-28 A | 35SS | 100% |  |  |  | start no earlier than 2012-10-08 | Arquitecto SW; Lider Proyecto | 128h | 128h |
| 38 | 4.6 | Validación y levantamiento de observaciones de User Stories Sprint 2 |  | 5d | 2012-10-13 A | 2012-10-17 A | 31SS | 100% |  |  |  | start no earlier than 2012-10-08 | Analista QA; Lider Proyecto | 80h | 80h |
| 39 | 4.7 | Validacion y levantamiento de observaciones de Implementacion reglas Ing. SW |  | 5d | 2012-10-29 | 2012-11-02 | 35 |  |  | 107d |  | start no earlier than 2012-10-08 | Analista QA; Lider Proyecto | 80h |  |
| 40 | 4.8 | Validación y levantamiento de observaciones DOC de reglas Ing. SI |  | 5d | 2012-10-29 | 2012-11-02 | 37 |  |  | 92d | 0d | start no earlier than 2012-10-08 | Analista QA; Lider Proyecto | 80h |  |
| 41 | 4.9 | Acta de Conformidad Cliente | milestone | 0d | 2012-11-02 | 2012-11-02 | 40 |  |  | 107d |  | start no earlier than 2012-10-29 | Lider Proyecto |  |  |
| 42 | 4.10 | Acta de Conformidad Asesor Técnico | milestone | 0d | 2012-11-02 | 2012-11-02 | 40 |  |  | 107d |  | start no earlier than 2012-10-29 | Lider Proyecto |  |  |
| 43 | 4.11 | Acta de Conformidad Experto Psicólogo | milestone | 0d | 2012-11-02 | 2012-11-02 | 40 |  |  | 107d |  | start no earlier than 2012-10-29 | Lider Proyecto |  |  |
| 44 | 4.12 | Finalizacion y retrospectiva del Sprint 2 | milestone | 0d | 2012-11-02 | 2012-11-02 | 40 |  |  | 92d | 0d | start no earlier than 2012-10-29 | Lider Proyecto |  |  |
| 45 | 5 | **Sprint 3** |  | 15d | 2012-11-02 A | 2012-11-17 |  | 5% | 14.28d | 92d |  |  |  | 696h | 31.2h |
| 46 | 5.1 | Contrato SWF | milestone | 0d | 2012-11-02 | 2012-11-02 | 44 |  |  | 92d | 0d |  |  |  |  |
| 47 | 5.2 | Implementar las reglas para los postulantes a la carrera de Ingeniería de Sistemas |  | 8d | 2012-11-03 | 2012-11-10 | 46 |  |  | 92d | 0d |  | Recurso Desarrollador | 64h |  |
| 48 | 5.3 | Establecer las reglas para el perfil de habilidades de los postulantes a la carrera de Ciencias de la computación |  | 8d | 2012-11-03 | 2012-11-10 | 47SS |  |  | 99d |  |  | Arquitecto SW; Lider Proyecto | 128h |  |
| 49 | 5.4 | Establecer las reglas para el perfil de preferencias de los postulantes a la carrera de Ciencias de la computación |  | 8d | 2012-11-03 | 2012-11-10 | 47SS |  |  | 92d | 0d |  | Arquitecto SW; Lider Proyecto | 128h |  |
| 50 | 5.5 | Diseño de Interfaz del login de usuario |  | 3d | 2012-11-11 A | 2012-11-13 | 49 | 30% | 2.1d | 92d | 0d |  | Arquitecto SW | 24h | 7.2h |
| 51 | 5.6 | Implementar Login de Usuario al sistema |  | 2d | 2012-11-14 | 2012-11-15 | 50 |  |  | 92d | 0d |  | Recurso Desarrollador | 16h |  |
| 52 | 5.7 | Validacion y levantamiento de observaciones de User Stories Sprint 3 |  | 5d | 2012-11-03 A | 2012-11-07 | 47SS | 30% | 3.5d | 102d |  | start no earlier than 2012-10-29 | Analista QA; Lider Proyecto | 80h | 24h |
| 53 | 5.8 | Validación y levantamiento de observaciones de Implementación reglas Ing. SI |  | 7d | 2012-11-11 | 2012-11-17 | 47 |  |  | 92d |  |  | Analista QA; Lider Proyecto | 112h |  |
| 54 | 5.9 | Validación y levantamiento de observaciones DOC de reglas Ing. CS |  | 7d | 2012-11-11 | 2012-11-17 | 49 |  |  | 92d |  |  | Analista QA; Lider Proyecto | 112h |  |
| 55 | 5.10 | Validación y levantamiento de observaciones Diseño e Implementación login de Usuario |  | 2d | 2012-11-16 | 2012-11-17 | 51 |  |  | 92d | 0d |  | Analista QA; Lider Proyecto | 32h |  |
| 56 | 5.11 | Acta de Conformidad Cliente | milestone | 0d | 2012-11-17 | 2012-11-17 | 55 |  |  | 92d |  |  | Lider Proyecto |  |  |
| 57 | 5.12 | Acta de Conformidad Asesor Técnico | milestone | 0d | 2012-11-17 | 2012-11-17 | 55 |  |  | 92d |  |  | Lider Proyecto |  |  |
| 58 | 5.13 | Acta de Conformidad Experto Psicólogo | milestone | 0d | 2012-11-17 | 2012-11-17 | 55 |  |  | 92d |  |  | Lider Proyecto |  |  |
| 59 | 5.14 | Finalizacion y retrospectiva del Sprint 3 | milestone | 0d | 2012-11-17 | 2012-11-17 | 55 |  |  | 92d |  |  | Lider Proyecto |  |  |

| ID | WBS | Task | Type | Duration | Start | Finish | Predecessors | Total slack | Free slack | Constraint |
| --- | --- | --- | --- | --- | --- | --- | --- | --- | --- | --- |
| 60 | 6 | **Sprint 4** |  | 21d | 2013-03-18 | 2013-04-08 |  | 21d |  |  |
| 61 | 6.1 | Contrato SWF | milestone | 0d | 2013-03-18 | 2013-03-18 |  | 69d | 0d | start no earlier than 2013-03-18 |
| 62 | 6.2 | Implementar las reglas para los postulantes a la carrera de Ciencias de la computación |  | 7d | 2013-03-18 | 2013-03-24 | 61 | 69d | 0d | start no earlier than 2013-03-18 |
| 63 | 6.3 | Diseño de lógico y físico de la base de datos para el almacenamiento de los resultados de los postulantes |  | 4d | 2013-03-25 | 2013-03-28 | 62 | 69d | 0d |  |
| 64 | 6.4 | Diseño de Interfaz del test vocacional |  | 5d | 2013-03-29 | 2013-04-02 | 63 | 69d | 0d |  |
| 65 | 6.5 | Diseño de Interfaz de módulo de ayuda |  | 3d | 2013-04-03 | 2013-04-05 | 64 | 69d | 0d |  |
| 66 | 6.6 | Validación y levantamiento de observaciones de User Stories Sprint 4 |  | 5d | 2013-03-18 | 2013-03-22 |  | 85d |  | start no earlier than 2013-03-18 |
| 67 | 6.7 | Validación y levantamiento de observaciones de Implementación reglas CS |  | 7d | 2013-03-25 | 2013-03-31 | 62 | 76d |  |  |
| 68 | 6.8 | Validación y levantamiento de observaciones de diseño módulo de ayuda |  | 2d | 2013-04-06 | 2013-04-07 | 65 | 69d |  |  |
| 69 | 6.9 | Validación y levantamiento de observaciones diseño test vocacional |  | 2d | 2013-04-03 | 2013-04-04 | 64 | 72d |  |  |
| 70 | 6.10 | Acta de Conformidad Cliente | milestone | 0d | 2013-04-08 | 2013-04-08 |  | 69d |  | start no earlier than 2013-04-08 |
| 71 | 6.11 | Acta de Conformidad Asesor Técnico | milestone | 0d | 2013-04-08 | 2013-04-08 |  | 69d |  | start no earlier than 2013-04-08 |
| 72 | 6.12 | Acta de Conformidad Experto Psicólogo | milestone | 0d | 2013-04-08 | 2013-04-08 |  | 69d |  | start no earlier than 2013-04-08 |
| 73 | 6.13 | Finalizacion y retrospectiva del Sprint 4 | milestone | 0d | 2013-04-08 | 2013-04-08 |  | 0d |  | start no earlier than 2013-04-08 |
| 74 | 7 | **Sprint 5** |  | 20d | 2013-04-08 | 2013-04-27 |  | 0d |  |  |
| 75 | 7.1 | Contrato SWF | milestone | 0d | 2013-04-09 | 2013-04-09 | 73 | 68d |  | start no earlier than 2013-04-09 |
| 76 | 7.2 | Consultar del módulo de ayuda |  | 3d | 2013-04-22 | 2013-04-24 | 77 | 0d |  |  |
| 77 | 7.3 | Realizar test vocacional para obtener resultado |  | 14d | 2013-04-08 | 2013-04-21 | 73 | 0d |  |  |
| 78 | 7.4 | Elaborar manual de usuario |  | 3d | 2013-04-22 | 2013-04-24 | 76SS | 0d |  |  |
| 79 | 7.5 | Validación y levantamiento de observaciones de User Stories Sprint 5 |  | 5d | 2013-04-08 | 2013-04-12 | 73 | 64d |  |  |
| 80 | 7.6 | Validación y levantamiento de observaciones del módulo de ayuda |  | 3d | 2013-04-25 | 2013-04-27 | 76 | 49d |  |  |
| 81 | 7.7 | Validación y levantamiento de observaciones test vocacional |  | 4d | 2013-04-22 | 2013-04-25 | 77 | 51d |  |  |
| 82 | 7.8 | Validación y levantamiento de observaciones manual de usuario |  | 2d | 2013-04-25 | 2013-04-26 | 78 | 0d |  |  |
| 83 | 7.9 | Acta de Conformidad Cliente | milestone | 0d | 2013-04-26 | 2013-04-26 | 82 | 50d |  |  |
| 84 | 7.10 | Acta de Conformidad Asesor Técnico | milestone | 0d | 2013-04-26 | 2013-04-26 | 82 | 50d |  |  |
| 85 | 7.11 | Acta de Conformidad Experto Psicólogo | milestone | 0d | 2013-04-26 | 2013-04-26 | 82 | 50d |  |  |
| 86 | 7.12 | Finalizacion y retrospectiva del Sprint 5 | milestone | 0d | 2013-04-26 | 2013-04-26 | 82 | 0d |  |  |

| ID | WBS | Task | Type | Duration | Start | Finish | Predecessors | Total slack | Constraint |
| --- | --- | --- | --- | --- | --- | --- | --- | --- | --- |
| 87 | 8 | **Sprint 6** |  | 21d | 2013-04-26 | 2013-05-25 |  | 0d |  |
| 88 | 8.1 | Contrato SWF | milestone | 0d | 2013-04-26 | 2013-04-26 | 86 | 0d |  |
| 89 | 8.2 | Guardar resultado obtenido por postulantes en base de datos |  | 3d | 2013-04-27 | 2013-04-29 | 88 | 0d |  |
| 90 | 8.3 | Generar reporte de estados de acuerdo a los resultados de los postulantes |  | 7d | 2013-04-30 | 2013-05-13 | 89 | 0d |  |
| 91 | 8.4 | Implementar WebServices |  | 7d | 2013-05-14 | 2013-05-20 | 90 | 0d |  |
| 92 | 8.5 | Validación y levantamiento de observaciones de User Stories Sprint 6 |  | 4d | 2013-04-27 | 2013-04-30 | 86 | 46d |  |
| 93 | 8.6 | Validación y levantamiento de observaciones de resultados guardados por postulantes en base de datos |  | 4d | 2013-04-30 | 2013-05-03 | 89 | 43d |  |
| 94 | 8.7 | Validación y levantamiento de observaciones de funcionalidades en Webservices |  | 4d | 2013-05-21 | 2013-05-24 | 91 | 0d |  |
| 95 | 8.8 | Validación y levantamiento de observaciones de los reportes generados |  | 4d | 2013-05-14 | 2013-05-17 | 90 | 36d |  |
| 96 | 8.9 | Acta de Conformidad Cliente | milestone | 0d | 2013-05-25 | 2013-05-25 | 94 | 29d | start no earlier than 2013-05-25 |
| 97 | 8.10 | Acta de Conformidad Asesor Técnico | milestone | 0d | 2013-05-25 | 2013-05-25 | 94 | 29d | start no earlier than 2013-05-25 |
| 98 | 8.11 | Acta de Conformidad Experto Psicólogo | milestone | 0d | 2013-05-25 | 2013-05-25 | 94 | 29d | start no earlier than 2013-05-25 |
| 99 | 8.12 | Finalizacion y retrospectiva del Sprint 6 | milestone | 0d | 2013-05-25 | 2013-05-25 | 94 | 0d | start no earlier than 2013-05-25 |
| 100 | 9 | **Sprint 7** |  | 21d | 2013-05-25 | 2013-06-14 |  | 0d |  |
| 101 | 9.1 | Pruebas de Confiabilidad |  | 14d | 2013-05-25 | 2013-06-07 | 99 | 0d |  |
| 102 | 9.2 | Elaborar documento de lecciones aprendidas |  | 5d | 2013-06-08 | 2013-06-12 | 101 | 0d |  |
| 103 | 9.3 | Validación y levantamiento de observaciones de documento lecciones aprendidas |  | 2d | 2013-06-13 | 2013-06-14 | 102 | 0d |  |
| 104 | 9.4 | Acta de Conformidad Cliente | milestone | 0d | 2013-06-14 | 2013-06-14 | 103 | 8d |  |
| 105 | 9.5 | Acta de Conformidad Asesor Técnico | milestone | 0d | 2013-06-14 | 2013-06-14 | 103 | 8d |  |
| 106 | 9.6 | Acta de Conformidad Experto Psicólogo | milestone | 0d | 2013-06-14 | 2013-06-14 | 103 | 8d |  |
| 107 | 9.7 | Finalizacion y retrospectiva del Sprint 7 | milestone | 0d | 2013-06-14 | 2013-06-14 | 103 | 0d |  |
| 108 | 10 | **Sprint 8** |  | 8d | 2013-06-15 | 2013-06-22 |  | 0d |  |
| 109 | 10.1 | Pruebas de Integración |  | 3d | 2013-06-15 | 2013-06-17 | 107 | 0d |  |
| 110 | 10.2 | Desplegar aplicación en Servicios ITExpert |  | 5d | 2013-06-18 | 2013-06-22 | 109 | 0d |  |
| 111 | 10.3 | Acta de Conformidad Cliente | milestone | 0d | 2013-06-22 | 2013-06-22 | 110 | 0d |  |
| 112 | 10.4 | Acta de Conformidad Asesor Técnico | milestone | 0d | 2013-06-22 | 2013-06-22 | 110 | 0d |  |
| 113 | 10.5 | Acta de Conformidad Experto Psicólogo | milestone | 0d | 2013-06-22 | 2013-06-22 | 110 | 0d |  |
| 114 | 10.6 | Finalizacion y retrospectiva del Sprint 8 | milestone | 0d | 2013-06-22 | 2013-06-22 | 110 | 0d |  |

| ID | WBS | Task | Type | Duration | Start | Finish | Complete | Remaining | Total slack | Constraint | Resources |
| --- | --- | --- | --- | --- | --- | --- | --- | --- | --- | --- | --- |
| 115 | 11 | **Seguimiento y Control** |  | 158d | 2012-08-16 A | 2013-06-01 |  | 158d | 21d |  |  |
| 116 | 11.1 | Sustentación Parcial TP1 | milestone | 0d | 2012-09-13 A | 2012-09-13 A | 100% |  |  | start no earlier than 2012-09-13 | Arquitecto SW; Lider Proyecto |
| 117 | 11.2 | Avance TP1 | milestone | 0d | 2012-10-22 | 2012-10-22 |  |  | 119d | start no earlier than 2012-10-22 | Arquitecto SW; Lider Proyecto |
| 118 | 11.3 | Entrega Memoria TP1 | milestone | 0d | 2012-11-15 | 2012-11-15 |  |  | 95d | start no earlier than 2012-11-15 | Arquitecto SW; Lider Proyecto |
| 119 | 11.4 | Sustentación Final TP1 | milestone | 0d | 2012-12-05 | 2012-12-05 |  |  | 91d | start no earlier than 2012-12-05 | Arquitecto SW; Lider Proyecto |
| 120 | 11.5 | **Reunion Sprint Cliente Luis Garcia** |  | 156d | 2012-08-16 | 2013-05-30 |  |  | 23d |  |  |
| 121 | 11.5.1 | Reunion Sprint Cliente Luis Garcia 1 |  | 1d | 2012-08-16 | 2012-08-16 |  |  | 178d | start no earlier than 2012-08-16 |  |
| 122 | 11.5.2 | Reunion Sprint Cliente Luis Garcia 2 |  | 1d | 2012-08-23 | 2012-08-23 |  |  | 171d | start no earlier than 2012-08-23 |  |
| 123 | 11.5.3 | Reunion Sprint Cliente Luis Garcia 3 |  | 1d | 2012-08-30 | 2012-08-30 |  |  | 164d | start no earlier than 2012-08-30 |  |
| 124 | 11.5.4 | Reunion Sprint Cliente Luis Garcia 4 |  | 1d | 2012-09-06 | 2012-09-06 |  |  | 157d | start no earlier than 2012-09-06 |  |
| 125 | 11.5.5 | Reunion Sprint Cliente Luis Garcia 5 |  | 1d | 2012-09-13 | 2012-09-13 |  |  | 150d | start no earlier than 2012-09-13 |  |
| 126 | 11.5.6 | Reunion Sprint Cliente Luis Garcia 6 |  | 1d | 2012-09-20 | 2012-09-20 |  |  | 143d | start no earlier than 2012-09-20 |  |
| 127 | 11.5.7 | Reunion Sprint Cliente Luis Garcia 7 |  | 1d | 2012-09-27 | 2012-09-27 |  |  | 136d | start no earlier than 2012-09-27 |  |
| 128 | 11.5.8 | Reunion Sprint Cliente Luis Garcia 9 |  | 1d | 2012-10-11 | 2012-10-11 |  |  | 129d | start no earlier than 2012-10-11 |  |
| 129 | 11.5.9 | Reunion Sprint Cliente Luis Garcia 10 |  | 1d | 2012-10-18 | 2012-10-18 |  |  | 122d | start no earlier than 2012-10-18 |  |
| 130 | 11.5.10 | Reunion Sprint Cliente Luis Garcia 11 |  | 1d | 2012-10-25 | 2012-10-25 |  |  | 115d | start no earlier than 2012-10-25 |  |
| 131 | 11.5.11 | Reunion Sprint Cliente Luis Garcia 12 |  | 1d | 2012-11-01 | 2012-11-01 |  |  | 108d | start no earlier than 2012-11-01 |  |
| 132 | 11.5.12 | Reunion Sprint Cliente Luis Garcia 13 |  | 1d | 2012-11-08 | 2012-11-08 |  |  | 101d | start no earlier than 2012-11-08 |  |
| 133 | 11.5.13 | Reunion Sprint Cliente Luis Garcia 14 |  | 1d | 2012-11-15 | 2012-11-15 |  |  | 94d | start no earlier than 2012-11-15 |  |
| 134 | 11.5.14 | Reunion Sprint Cliente Luis Garcia 32 |  | 1d | 2013-03-21 | 2013-03-21 |  |  | 86d | start no earlier than 2013-03-21 |  |
| 135 | 11.5.15 | Reunion Sprint Cliente Luis Garcia 33 |  | 1d | 2013-03-28 | 2013-03-28 |  |  | 79d | start no earlier than 2013-03-28 |  |
| 136 | 11.5.16 | Reunion Sprint Cliente Luis Garcia 34 |  | 1d | 2013-04-04 | 2013-04-04 |  |  | 72d | start no earlier than 2013-04-04 |  |
| 137 | 11.5.17 | Reunion Sprint Cliente Luis Garcia 35 |  | 1d | 2013-04-11 | 2013-04-11 |  |  | 65d | start no earlier than 2013-04-11 |  |
| 138 | 11.5.18 | Reunion Sprint Cliente Luis Garcia 36 |  | 1d | 2013-04-18 | 2013-04-18 |  |  | 58d | start no earlier than 2013-04-18 |  |
| 139 | 11.5.19 | Reunion Sprint Cliente Luis Garcia 37 |  | 1d | 2013-04-25 | 2013-04-25 |  |  | 51d | start no earlier than 2013-04-25 |  |
| 140 | 11.5.20 | Reunion Sprint Cliente Luis Garcia 38 |  | 1d | 2013-05-02 | 2013-05-02 |  |  | 44d | start no earlier than 2013-05-02 |  |
| 141 | 11.5.21 | Reunion Sprint Cliente Luis Garcia 39 |  | 1d | 2013-05-13 | 2013-05-13 |  |  | 40d | start no earlier than 2013-05-09 |  |
| 142 | 11.5.22 | Reunion Sprint Cliente Luis Garcia 40 |  | 1d | 2013-05-16 | 2013-05-16 |  |  | 37d | start no earlier than 2013-05-16 |  |
| 143 | 11.5.23 | Reunion Sprint Cliente Luis Garcia 41 |  | 1d | 2013-05-23 | 2013-05-23 |  |  | 30d | start no earlier than 2013-05-23 |  |
| 144 | 11.5.24 | Reunion Sprint Cliente Luis Garcia 42 |  | 1d | 2013-05-30 | 2013-05-30 |  |  | 23d | start no earlier than 2013-05-30 |  |

| ID | WBS | Task | Duration | Start | Finish | Total slack | Constraint |
| --- | --- | --- | --- | --- | --- | --- | --- |
| 145 | 11.6 | **Reunion Sprint Asesor David Mauricio** | 156d | 2012-08-18 | 2013-06-01 | 21d |  |
| 146 | 11.6.1 | Reunion Sprint Asesor David Mauricio 1 | 1d | 2012-08-18 | 2012-08-18 | 176d | start no earlier than 2012-08-18 |
| 147 | 11.6.2 | Reunion Sprint Asesor David Mauricio 2 | 1d | 2012-08-25 | 2012-08-25 | 169d | start no earlier than 2012-08-25 |
| 148 | 11.6.3 | Reunion Sprint Asesor David Mauricio 3 | 1d | 2012-09-01 | 2012-09-01 | 162d | start no earlier than 2012-09-01 |
| 149 | 11.6.4 | Reunion Sprint Asesor David Mauricio 4 | 1d | 2012-09-08 | 2012-09-08 | 155d | start no earlier than 2012-09-08 |
| 150 | 11.6.5 | Reunion Sprint Asesor David Mauricio 5 | 1d | 2012-09-15 | 2012-09-15 | 148d | start no earlier than 2012-09-15 |
| 151 | 11.6.6 | Reunion Sprint Asesor David Mauricio 6 | 1d | 2012-09-22 | 2012-09-22 | 141d | start no earlier than 2012-09-22 |
| 152 | 11.6.7 | Reunion Sprint Asesor David Mauricio 7 | 1d | 2012-09-29 | 2012-09-29 | 134d | start no earlier than 2012-09-29 |
| 153 | 11.6.8 | Reunion Sprint Asesor David Mauricio 9 | 1d | 2012-10-13 | 2012-10-13 | 127d | start no earlier than 2012-10-13 |
| 154 | 11.6.9 | Reunion Sprint Asesor David Mauricio 10 | 1d | 2012-10-20 | 2012-10-20 | 120d | start no earlier than 2012-10-20 |
| 155 | 11.6.10 | Reunion Sprint Asesor David Mauricio 11 | 1d | 2012-10-27 | 2012-10-27 | 113d | start no earlier than 2012-10-27 |
| 156 | 11.6.11 | Reunion Sprint Asesor David Mauricio 12 | 1d | 2012-11-03 | 2012-11-03 | 106d | start no earlier than 2012-11-03 |
| 157 | 11.6.12 | Reunion Sprint Asesor David Mauricio 13 | 1d | 2012-11-10 | 2012-11-10 | 99d | start no earlier than 2012-11-10 |
| 158 | 11.6.13 | Reunion Sprint Asesor David Mauricio 14 | 1d | 2012-11-17 | 2012-11-17 | 92d | start no earlier than 2012-11-17 |
| 159 | 11.6.14 | Reunion Sprint Asesor David Mauricio 32 | 1d | 2013-03-23 | 2013-03-23 | 84d | start no earlier than 2013-03-23 |
| 160 | 11.6.15 | Reunion Sprint Asesor David Mauricio 33 | 1d | 2013-03-30 | 2013-03-30 | 77d | start no earlier than 2013-03-30 |
| 161 | 11.6.16 | Reunion Sprint Asesor David Mauricio 34 | 1d | 2013-04-06 | 2013-04-06 | 70d | start no earlier than 2013-04-06 |
| 162 | 11.6.17 | Reunion Sprint Asesor David Mauricio 35 | 1d | 2013-04-13 | 2013-04-13 | 63d | start no earlier than 2013-04-13 |
| 163 | 11.6.18 | Reunion Sprint Asesor David Mauricio 36 | 1d | 2013-04-20 | 2013-04-20 | 56d | start no earlier than 2013-04-20 |
| 164 | 11.6.19 | Reunion Sprint Asesor David Mauricio 37 | 1d | 2013-04-27 | 2013-04-27 | 49d | start no earlier than 2013-04-27 |
| 165 | 11.6.20 | Reunion Sprint Asesor David Mauricio 38 | 1d | 2013-05-04 | 2013-05-04 | 42d | start no earlier than 2013-05-04 |
| 166 | 11.6.21 | Reunion Sprint Asesor David Mauricio 40 | 1d | 2013-05-18 | 2013-05-18 | 35d | start no earlier than 2013-05-18 |
| 167 | 11.6.22 | Reunion Sprint Asesor David Mauricio 41 | 1d | 2013-05-25 | 2013-05-25 | 28d | start no earlier than 2013-05-25 |
| 168 | 11.6.23 | Reunion Sprint Asesor David Mauricio 42 | 1d | 2013-06-01 | 2013-06-01 | 21d | start no earlier than 2013-06-01 |
